# elaboration_project_plan

Schedule from MS Project, 2007-03-01 to 2007-10-01.
Duke University

## Calendars

- Standard: Mon-Fri 08:00-12:00, 13:00-17:00; Sat-Sun off.

## Resources

| Resource |
| --- |
| Patrick |
| Ram |
| Elaborators |
| PriyatamElaborators |
| Development team |
| Pri |
| Priyatam |
| Ramakrishna |
| Kruttik |
| Manav |
| Developers |
| Development teatm |
| BAH |
| Adopters |
| Pryatam |

## Schedule

| ID | WBS | Task | Type | Duration | Start | Finish | Predecessors | Total slack | Free slack | Constraint | Resources | Work |
| --- | --- | --- | --- | --- | --- | --- | --- | --- | --- | --- | --- | --- |
| 1 | 1 | **Iteration 1 (eligibility, study personnel, multi-site study)** |  | 47d | 2007-03-01 | 2007-05-04 |  | 105d |  |  |  | 18104h |
| 2 | 1.1 | Iteration start | milestone | 0d | 2007-03-01 | 2007-03-01 |  | 120d | 0d | start no earlier than 2007-03-01 |  |  |
| 3 | 1.2 | **Project Management** |  | 30d | 2007-03-01 | 2007-04-11 | 2 | 122d |  |  | Patrick; Adopters; BAH | 2640h |
| 4 | 1.2.1 | **Draft project plan (task 1.1)** |  | 30d | 2007-03-01 | 2007-04-11 |  | 122d |  |  | Patrick; Adopters; BAH | 960h |
| 5 | 1.2.1.1 | Developer draft |  | 5d | 2007-03-01 | 2007-03-07 |  | 122d | 0d |  | Patrick | 40h |
| 6 | 1.2.1.2 | BAH review |  | 5d | 2007-03-08 | 2007-03-14 | 5 | 122d | 0d |  | BAH | 40h |
| 7 | 1.2.1.3 | Developer update |  | 5d | 2007-03-15 | 2007-03-21 | 6 | 122d | 0d |  | Patrick | 40h |
| 8 | 1.2.1.4 | Adopter review |  | 3d | 2007-03-22 | 2007-03-26 | 7 | 122d | 0d |  | Adopters | 24h |
| 9 | 1.2.1.5 | Developer update |  | 2d | 2007-03-27 | 2007-03-28 | 8 | 122d | 0d |  | Patrick | 16h |
| 10 | 1.2.1.6 | Deliver project plan to BAH (task 1.1) | milestone | 0d | 2007-03-28 | 2007-03-28 | 9 | 122d | 0d |  | Patrick |  |
| 11 | 1.2.1.7 | BAH review project plan (task 1.1) |  | 10d | 2007-03-29 | 2007-04-11 | 10 | 122d |  |  | BAH | 80h |
| 12 | 1.2.2 | **Update risk matrix (task 1.3.1)** |  | 20d | 2007-03-01 | 2007-03-28 |  | 122d |  |  | Patrick; BAH | 480h |
| 13 | 1.2.2.1 | Update risk matrix for week 1 |  | 5d | 2007-03-01 | 2007-03-07 |  | 122d | 0d |  | Patrick | 40h |
| 14 | 1.2.2.2 | Update risk matrix for week 2 |  | 5d | 2007-03-08 | 2007-03-14 | 13 | 122d | 0d |  | Patrick | 40h |
| 15 | 1.2.2.3 | Deliver risk matrix to BAH (task 1.3.1) | milestone | 0d | 2007-03-14 | 2007-03-14 | 14 | 122d | 0d |  | Patrick |  |
| 16 | 1.2.2.4 | BAH review risk matrix (task 1.3.1) |  | 10d | 2007-03-15 | 2007-03-28 | 15 | 132d |  |  | BAH | 80h |
| 17 | 1.2.3 | **Monthly report (task 1.3.1)** |  | 20d | 2007-03-15 | 2007-04-11 | 15 | 122d |  |  | Patrick; BAH | 480h |
| 18 | 1.2.3.1 | Update risk matrix for week 3 |  | 5d | 2007-03-15 | 2007-03-21 |  | 122d | 0d |  | Patrick | 40h |
| 19 | 1.2.3.2 | Update risk matrix for week 4 |  | 5d | 2007-03-22 | 2007-03-28 | 18 | 122d | 0d |  | Patrick | 40h |
| 20 | 1.2.3.3 | Deliver monthly report and risk matrix to BAH (task 1.3.1) | milestone | 0d | 2007-03-28 | 2007-03-28 | 19 | 122d | 0d |  | Patrick |  |
| 21 | 1.2.3.4 | BAH review monthly report and risk matrix (task 1.3.1) |  | 10d | 2007-03-29 | 2007-04-11 | 20 | 122d |  |  | BAH | 80h |
| 22 | 1.3 | **Requirements and use cases** |  | 30d | 2007-03-01 | 2007-04-11 | 2 | 120d |  |  | Developers; Adopters; BAH | 2688h |
| 23 | 1.3.1 | **Create level 1 use cases and requirements** |  | 2d | 2007-03-01 | 2007-03-02 |  | 120d | 0d |  | Developers | 32h |
| 24 | 1.3.1.1 | Use case document (task 3.1.1) |  | 1d | 2007-03-01 | 2007-03-01 |  | 120d | 0d |  | Developers | 8h |
| 25 | 1.3.1.2 | Requirements document (3.2.1) |  | 1d | 2007-03-02 | 2007-03-02 | 24 | 120d |  |  | Developers | 8h |

| ID | WBS | Task | Duration | Start | Finish | Predecessors | Total slack | Free slack | Resources | Work |
| --- | --- | --- | --- | --- | --- | --- | --- | --- | --- | --- |
| 26 | 1.3.2 | **Update use case document (task 3.1.1, task 5.2.1)** | 9d | 2007-03-05 | 2007-03-15 | 23 | 122d | 0d | Developers; Adopters | 888h |
| 27 | 1.3.2.1 | **Update eligibility use cases** | 9d | 2007-03-05 | 2007-03-15 |  | 122d |  | Kruttik; Priyatam; Adopters | 312h |
| 28 | 1.3.2.1.1 | Developer update | 2d | 2007-03-05 | 2007-03-06 |  | 122d | 0d | Kruttik; Priyatam | 32h |
| 29 | 1.3.2.1.2 | Adopter review | 5d | 2007-03-07 | 2007-03-13 | 28 | 122d | 0d | Adopters | 40h |
| 30 | 1.3.2.1.3 | Developer update | 1d | 2007-03-14 | 2007-03-14 | 29 | 122d | 0d | Kruttik; Priyatam | 16h |
| 31 | 1.3.2.1.4 | Adopter sign-off | 1d | 2007-03-15 | 2007-03-15 | 30 | 122d |  | Adopters | 8h |
| 32 | 1.3.2.2 | **Update study personel use cases** | 9d | 2007-03-05 | 2007-03-15 |  | 122d |  | Ramakrishna; Adopters | 216h |
| 33 | 1.3.2.2.1 | Developer update | 2d | 2007-03-05 | 2007-03-06 |  | 122d | 0d | Ramakrishna | 16h |
| 34 | 1.3.2.2.2 | Adopter review | 5d | 2007-03-07 | 2007-03-13 | 33 | 122d | 0d | Adopters | 40h |
| 35 | 1.3.2.2.3 | Developer update | 1d | 2007-03-14 | 2007-03-14 | 34 | 122d | 0d | Ramakrishna | 8h |
| 36 | 1.3.2.2.4 | Adopter sign-off | 1d | 2007-03-15 | 2007-03-15 | 35 | 122d |  | Adopters | 8h |
| 37 | 1.3.2.3 | **Update multi-site trial use cases** | 9d | 2007-03-05 | 2007-03-15 |  | 122d |  | Manav; Adopters | 216h |
| 38 | 1.3.2.3.1 | Developer update | 2d | 2007-03-05 | 2007-03-06 |  | 122d | 0d | Manav | 16h |
| 39 | 1.3.2.3.2 | Adopter review | 5d | 2007-03-07 | 2007-03-13 | 38 | 122d | 0d | Adopters | 40h |
| 40 | 1.3.2.3.3 | Developer update | 1d | 2007-03-14 | 2007-03-14 | 39 | 122d | 0d | Manav | 8h |
| 41 | 1.3.2.3.4 | Adopter sign-off | 1d | 2007-03-15 | 2007-03-15 | 40 | 122d |  | Adopters | 8h |
| 42 | 1.3.3 | **Update requirements document (task 3.2.1, task 5.3.1)** | 9d | 2007-03-16 | 2007-03-28 | 26 | 122d | 0d | Developers; Adopters | 888h |
| 43 | 1.3.3.1 | **Update eligibility requirements** | 9d | 2007-03-16 | 2007-03-28 |  | 122d |  | Kruttik; Priyatam; Adopters | 312h |
| 44 | 1.3.3.1.1 | Developer update | 2d | 2007-03-16 | 2007-03-19 |  | 122d | 0d | Kruttik; Priyatam | 32h |
| 45 | 1.3.3.1.2 | Adopter review | 5d | 2007-03-20 | 2007-03-26 | 44 | 122d | 0d | Adopters | 40h |
| 46 | 1.3.3.1.3 | Developer update | 1d | 2007-03-27 | 2007-03-27 | 45 | 122d | 0d | Kruttik; Priyatam | 16h |
| 47 | 1.3.3.1.4 | Adopter sign-off | 1d | 2007-03-28 | 2007-03-28 | 46 | 122d |  | Adopters | 8h |
| 48 | 1.3.3.2 | **Update study personel requirements** | 9d | 2007-03-16 | 2007-03-28 |  | 122d |  | Ramakrishna; Adopters | 216h |
| 49 | 1.3.3.2.1 | Developer update | 2d | 2007-03-16 | 2007-03-19 |  | 122d | 0d | Ramakrishna | 16h |
| 50 | 1.3.3.2.2 | Adopter review | 5d | 2007-03-20 | 2007-03-26 | 49 | 122d | 0d | Adopters | 40h |
| 51 | 1.3.3.2.3 | Developer update | 1d | 2007-03-27 | 2007-03-27 | 50 | 122d | 0d | Ramakrishna | 8h |
| 52 | 1.3.3.2.4 | Adopter sign-off | 1d | 2007-03-28 | 2007-03-28 | 51 | 122d |  | Adopters | 8h |

| ID | WBS | Task | Type | Duration | Start | Finish | Predecessors | Total slack | Free slack | Resources | Work |
| --- | --- | --- | --- | --- | --- | --- | --- | --- | --- | --- | --- |
| 53 | 1.3.3.3 | **Update multi-site trial requirements** |  | 9d | 2007-03-16 | 2007-03-28 |  | 122d |  | Manav; Adopters | 216h |
| 54 | 1.3.3.3.1 | Developer update |  | 2d | 2007-03-16 | 2007-03-19 |  | 122d | 0d | Manav | 16h |
| 55 | 1.3.3.3.2 | Adopter review |  | 5d | 2007-03-20 | 2007-03-26 | 54 | 122d | 0d | Adopters | 40h |
| 56 | 1.3.3.3.3 | Developer update |  | 1d | 2007-03-27 | 2007-03-27 | 55 | 122d | 0d | Manav | 8h |
| 57 | 1.3.3.3.4 | Adopter sign-off |  | 1d | 2007-03-28 | 2007-03-28 | 56 | 122d |  | Adopters | 8h |
| 58 | 1.3.4 | Developer deliver use case document to BAH (task 3.1.1, task 5.2.1) | milestone | 0d | 2007-03-28 | 2007-03-28 | 42 | 122d | 0d | Patrick |  |
| 59 | 1.3.5 | BAH review use case document (task 3.1.1, task 5.2.1) |  | 10d | 2007-03-29 | 2007-04-11 | 58 | 122d |  | BAH | 80h |
| 60 | 1.3.6 | Developer deliver requirements document to BAH (task 3.2.1, task 5.3.1) | milestone | 0d | 2007-03-28 | 2007-03-28 | 42 | 122d | 0d | Patrick |  |
| 61 | 1.3.7 | BAH review requirements document (task 3.2.1, task 5.3.1) |  | 10d | 2007-03-29 | 2007-04-11 | 60 | 122d |  | BAH | 80h |
| 62 | 1.4 | **Analysis and Design** |  | 29d | 2007-03-05 | 2007-04-12 | 23, 2 | 120d |  | Developers; Adopters; BAH | 3288h |
| 63 | 1.4.1 | **Perform level 1 design** |  | 2d | 2007-03-05 | 2007-03-06 |  | 120d | 0d | Developers | 48h |
| 64 | 1.4.1.1 | Cursory BRIDG harmonization |  | 1d | 2007-03-05 | 2007-03-05 |  | 120d | 0d | Developers | 8h |
| 65 | 1.4.1.2 | Update implementation model |  | 1d | 2007-03-06 | 2007-03-06 | 64 | 120d |  | Developers | 8h |
| 66 | 1.4.1.3 | Cursory system design |  | 2d | 2007-03-05 | 2007-03-06 |  | 120d |  | Developers | 16h |
| 67 | 1.4.2 | **Modeling (task 3.3.1)** |  | 27d | 2007-03-07 | 2007-04-12 | 63 | 121d |  | Developers; Adopters | 1104h |
| 68 | 1.4.2.1 | **Update model** |  | 6d | 2007-03-07 | 2007-03-14 |  | 121d | 0d | Developers | 264h |
| 69 | 1.4.2.1.1 | **BRIDG harmonization** |  | 3d | 2007-03-07 | 2007-03-09 | 63 | 121d | 0d |  | 96h |
| 70 | 1.4.2.1.1.1 | Harmonize Study model |  | 2d | 2007-03-07 | 2007-03-08 |  | 122d |  | Kruttik; Priyatam; Manav | 48h |
| 71 | 1.4.2.1.1.2 | Harmonize Personnel model |  | 3d | 2007-03-07 | 2007-03-09 |  | 121d |  | Ramakrishna | 24h |
| 72 | 1.4.2.1.1.3 | Harmonize Multi-site Study model |  | 3d | 2007-03-07 | 2007-03-09 |  | 121d |  | Manav | 24h |
| 73 | 1.4.2.1.2 | **Model implementation** |  | 3d | 2007-03-12 | 2007-03-14 | 69 | 121d |  |  | 120h |
| 74 | 1.4.2.1.2.1 | Implement Study model |  | 3d | 2007-03-12 | 2007-03-14 |  | 121d |  | Kruttik; Priyatam; Manav | 72h |
| 75 | 1.4.2.1.2.2 | Implement Personnel model |  | 3d | 2007-03-12 | 2007-03-14 |  | 121d |  | Ramakrishna | 24h |
| 76 | 1.4.2.1.2.3 | Implement Multi-site Study model |  | 3d | 2007-03-12 | 2007-03-14 |  | 121d |  | Manav | 24h |
| 77 | 1.4.2.2 | Adopter review |  | 5d | 2007-03-15 | 2007-03-21 | 68 | 121d | 0d | Adopters | 40h |

| ID | WBS | Task | Type | Duration | Start | Finish | Predecessors | Total slack | Free slack | Resources | Work |
| --- | --- | --- | --- | --- | --- | --- | --- | --- | --- | --- | --- |
| 78 | 1.4.2.3 | **Update model** |  | 6d | 2007-03-22 | 2007-03-29 | 77 | 121d | 0d | Developers | 288h |
| 79 | 1.4.2.3.1 | **BRIDG harmonization** |  | 3d | 2007-03-22 | 2007-03-26 | 77 | 121d | 0d |  | 120h |
| 80 | 1.4.2.3.1.1 | Harmonize Study model |  | 3d | 2007-03-22 | 2007-03-26 |  | 121d |  | Kruttik; Priyatam; Manav | 72h |
| 81 | 1.4.2.3.1.2 | Harmonize Personnel model |  | 3d | 2007-03-22 | 2007-03-26 |  | 121d |  | Ramakrishna | 24h |
| 82 | 1.4.2.3.1.3 | Harmonize Multi-site Study model |  | 3d | 2007-03-22 | 2007-03-26 |  | 121d |  | Manav | 24h |
| 83 | 1.4.2.3.2 | **Model implementation** |  | 3d | 2007-03-27 | 2007-03-29 | 79 | 121d |  |  | 120h |
| 84 | 1.4.2.3.2.1 | Implement Study model |  | 3d | 2007-03-27 | 2007-03-29 |  | 121d |  | Kruttik; Priyatam; Manav | 72h |
| 85 | 1.4.2.3.2.2 | Implement Personnel model |  | 3d | 2007-03-27 | 2007-03-29 |  | 121d |  | Ramakrishna | 24h |
| 86 | 1.4.2.3.2.3 | Implement Multi-site Study model |  | 3d | 2007-03-27 | 2007-03-29 |  | 121d |  | Manav | 24h |
| 87 | 1.4.2.4 | Developer deliver UML to BAH (task 3.3.1) | milestone | 0d | 2007-03-29 | 2007-03-29 | 78 | 121d | 0d | Patrick |  |
| 88 | 1.4.2.5 | BAH review of UML (task 3.3.1) |  | 10d | 2007-03-30 | 2007-04-12 | 87 | 121d |  | BAH | 80h |
| 89 | 1.4.3 | **System design (task 3.4.1)** |  | 25d | 2007-03-07 | 2007-04-10 | 63 | 123d |  | Developers; BAH | 1440h |
| 90 | 1.4.3.1 | **Design eligibility** |  | 15d | 2007-03-07 | 2007-03-27 |  | 123d | 0d | Kruttik; Priyatam | 480h |
| 91 | 1.4.3.1.1 | Draft UML |  | 5d | 2007-03-07 | 2007-03-13 |  | 123d | 0d | Kruttik; Priyatam | 80h |
| 92 | 1.4.3.1.2 | Team review |  | 5d | 2007-03-14 | 2007-03-20 | 91 | 123d | 0d | Kruttik; Priyatam | 80h |
| 93 | 1.4.3.1.3 | Update design document |  | 5d | 2007-03-21 | 2007-03-27 | 92 | 123d |  | Kruttik; Priyatam | 80h |
| 94 | 1.4.3.2 | **Design personnel** |  | 15d | 2007-03-07 | 2007-03-27 |  | 123d | 0d | Ramakrishna | 240h |
| 95 | 1.4.3.2.1 | Draft UML |  | 5d | 2007-03-07 | 2007-03-13 |  | 123d | 0d | Ramakrishna | 40h |
| 96 | 1.4.3.2.2 | Team review |  | 5d | 2007-03-14 | 2007-03-20 | 95 | 123d | 0d | Ramakrishna | 40h |
| 97 | 1.4.3.2.3 | Update design document |  | 5d | 2007-03-21 | 2007-03-27 | 96 | 123d |  | Ramakrishna | 40h |
| 98 | 1.4.3.3 | **Design multi-site study** |  | 15d | 2007-03-07 | 2007-03-27 |  | 123d | 0d | Manav | 240h |
| 99 | 1.4.3.3.1 | Draft UML |  | 5d | 2007-03-07 | 2007-03-13 |  | 123d | 0d | Manav | 40h |
| 100 | 1.4.3.3.2 | Team review |  | 5d | 2007-03-14 | 2007-03-20 | 99 | 123d | 0d | Manav | 40h |
| 101 | 1.4.3.3.3 | Update design document |  | 5d | 2007-03-21 | 2007-03-27 | 100 | 123d |  | Manav | 40h |
| 102 | 1.4.3.4 | Deliver design doc to BAH (task 3.4.1) | milestone | 0d | 2007-03-27 | 2007-03-27 | 90, 94, 98 | 123d | 0d | Patrick |  |
| 103 | 1.4.3.5 | BAH review design doc (task 3.4.1) |  | 10d | 2007-03-28 | 2007-04-10 | 102 | 123d |  | BAH | 80h |

| ID | WBS | Task | Duration | Start | Finish | Predecessors | Total slack | Free slack | Resources | Work |
| --- | --- | --- | --- | --- | --- | --- | --- | --- | --- | --- |
| 104 | 1.5 | **Implementation (task 3.5.1)** | 43d | 2007-03-07 | 2007-05-04 | 63, 2 | 105d |  | Developers; BAH | 2304h |
| 105 | 1.5.1 | **Database** | 5d | 2007-03-07 | 2007-03-13 |  | 120d | 28d | Developers | 264h |
| 106 | 1.5.1.1 | **Eligibility model** | 3d | 2007-03-07 | 2007-03-09 |  | 120d | 0d | Kruttik; Priyatam | 96h |
| 107 | 1.5.1.1.1 | Create DDLs | 1d | 2007-03-07 | 2007-03-07 |  | 120d | 0d | Kruttik; Priyatam | 16h |
| 108 | 1.5.1.1.2 | Apply to database | 1d | 2007-03-08 | 2007-03-08 | 107 | 120d | 0d | Kruttik; Priyatam | 16h |
| 109 | 1.5.1.1.3 | Create test data | 1d | 2007-03-09 | 2007-03-09 | 108 | 120d |  | Kruttik; Priyatam | 16h |
| 110 | 1.5.1.2 | **Study personnel** | 5d | 2007-03-07 | 2007-03-13 |  | 122d | 0d | Ramakrishna | 80h |
| 111 | 1.5.1.2.1 | Investigate how to implement Person with Role | 2d | 2007-03-07 | 2007-03-08 |  | 122d | 0d | Ramakrishna | 16h |
| 112 | 1.5.1.2.2 | Create DDLs | 1d | 2007-03-09 | 2007-03-09 | 111 | 122d | 0d | Ramakrishna | 8h |
| 113 | 1.5.1.2.3 | Apply to database | 1d | 2007-03-12 | 2007-03-12 | 112 | 122d | 0d | Ramakrishna | 8h |
| 114 | 1.5.1.2.4 | Create test data | 1d | 2007-03-13 | 2007-03-13 | 113 | 122d |  | Ramakrishna | 8h |
| 115 | 1.5.1.3 | **Multi-site** | 3d | 2007-03-07 | 2007-03-09 |  | 124d | 0d | Manav | 48h |
| 116 | 1.5.1.3.1 | Create DDLs | 1d | 2007-03-07 | 2007-03-07 |  | 124d | 0d | Manav | 8h |
| 117 | 1.5.1.3.2 | Apply to database | 1d | 2007-03-08 | 2007-03-08 | 116 | 124d | 0d | Manav | 8h |
| 118 | 1.5.1.3.3 | Create test data | 1d | 2007-03-09 | 2007-03-09 | 117 | 124d |  | Manav | 8h |
| 119 | 1.5.2 | **Deployment** | 2d | 2007-03-12 | 2007-03-13 |  | 143d |  | Manav | 32h |
| 120 | 1.5.2.1 | Deploy a second C3PR for multi-site testing | 2d | 2007-03-12 | 2007-03-13 | 115 | 143d |  | Manav | 16h |
| 121 | 1.5.3 | **Business layer** | 8d | 2007-03-12 | 2007-03-21 |  | 122d | 22d | Developers | 480h |
| 122 | 1.5.3.1 | **Implement eligibility APIs** | 7d | 2007-03-12 | 2007-03-20 | 106 | 123d | 0d | Kruttik; Priyatam | 224h |
| 123 | 1.5.3.1.1 | Design APIs | 2d | 2007-03-12 | 2007-03-13 |  | 123d | 0d | Kruttik; Priyatam | 32h |
| 124 | 1.5.3.1.2 | Implement APIs | 3d | 2007-03-14 | 2007-03-16 | 123 | 123d | 0d | Kruttik; Priyatam | 48h |
| 125 | 1.5.3.1.3 | Deploy APIs | 2d | 2007-03-19 | 2007-03-20 | 124 | 123d |  | Kruttik; Priyatam | 32h |
| 126 | 1.5.3.2 | **Implement study personnel APIs** | 6d | 2007-03-14 | 2007-03-21 | 110 | 122d | 0d | Ramakrishna | 96h |
| 127 | 1.5.3.2.1 | Design APIs | 2d | 2007-03-14 | 2007-03-15 |  | 122d | 0d | Ramakrishna | 16h |
| 128 | 1.5.3.2.2 | Implement APIs | 3d | 2007-03-16 | 2007-03-20 | 127 | 122d | 0d | Ramakrishna | 24h |
| 129 | 1.5.3.2.3 | Deploy APIs | 1d | 2007-03-21 | 2007-03-21 | 128 | 122d |  | Ramakrishna | 8h |

| ID | WBS | Task | Type | Duration | Start | Finish | Predecessors | Total slack | Free slack | Resources | Work |
| --- | --- | --- | --- | --- | --- | --- | --- | --- | --- | --- | --- |
| 130 | 1.5.3.3 | **Implement C3PR registration APIs** |  | 6d | 2007-03-12 | 2007-03-19 | 115 | 124d | 0d | Manav | 96h |
| 131 | 1.5.3.3.1 | Design APIs |  | 2d | 2007-03-12 | 2007-03-13 |  | 124d | 0d | Manav | 16h |
| 132 | 1.5.3.3.2 | Implement APIs |  | 3d | 2007-03-14 | 2007-03-16 | 131 | 124d | 0d | Manav | 24h |
| 133 | 1.5.3.3.3 | Deploy APIs |  | 1d | 2007-03-19 | 2007-03-19 | 132 | 124d |  | Manav | 8h |
| 134 | 1.5.4 | **ESB** |  | 5d | 2007-03-20 | 2007-03-26 |  | 124d | 19d | Manav | 80h |
| 135 | 1.5.4.1 | Implement inbound-binding component for C3PR registration |  | 5d | 2007-03-20 | 2007-03-26 | 130 | 124d |  | Manav | 40h |
| 136 | 1.5.5 | **Web interface** |  | 7d | 2007-03-20 | 2007-03-28 |  | 122d | 17d | Developers | 680h |
| 137 | 1.5.5.1 | **Modify study management interface** |  | 6d | 2007-03-20 | 2007-03-27 |  | 123d |  | Kruttik; Priyatam; Manav | 384h |
| 138 | 1.5.5.1.1 | Manage eligibility criteria |  | 5d | 2007-03-21 | 2007-03-27 | 122 | 123d |  | Kruttik; Priyatam; Manav | 120h |
| 139 | 1.5.5.1.2 | Manage multi-site study |  | 5d | 2007-03-20 | 2007-03-26 | 130 | 124d |  | Kruttik; Priyatam; Manav | 120h |
| 140 | 1.5.5.2 | **Modify study personnel management interface** |  | 5d | 2007-03-22 | 2007-03-28 |  | 122d |  | Ramakrishna | 80h |
| 141 | 1.5.5.2.1 | Manage study personnel |  | 5d | 2007-03-22 | 2007-03-28 | 126 | 122d |  | Ramakrishna | 40h |
| 142 | 1.5.5.3 | **Modify registration interface** |  | 5d | 2007-03-21 | 2007-03-27 |  | 123d |  | Kruttik; Priyatam | 160h |
| 143 | 1.5.5.3.1 | Check eligibility |  | 5d | 2007-03-21 | 2007-03-27 | 122 | 123d |  | Kruttik; Priyatam | 80h |
| 144 | 1.5.6 | Deliver codebase to BAH (task 3.5.1) | milestone | 0d | 2007-04-20 | 2007-04-20 | 105, 121, 134, 136, 200 | 105d | 0d | Patrick |  |
| 145 | 1.5.7 | BAH review codebase (task 3.5.1) |  | 10d | 2007-04-23 | 2007-05-04 | 144 | 105d |  | BAH | 80h |
| 146 | 1.6 | **Testing** |  | 42d | 2007-03-01 | 2007-04-27 | 2 | 110d |  | Developers; Adopters; BAH | 5528h |
| 147 | 1.6.1 | **Developer testing** |  | 42d | 2007-03-01 | 2007-04-27 |  | 110d |  | BAH; Adopters; Developers | 2256h |
| 148 | 1.6.1.1 | **Update developer test plan (task 3.6.1, task 5.4.1)** |  | 30d | 2007-03-01 | 2007-04-11 |  | 122d |  | Developers; Adopters; BAH | 960h |
| 149 | 1.6.1.1.1 | Developer draft |  | 5d | 2007-03-01 | 2007-03-07 |  | 122d | 0d | Developers | 40h |
| 150 | 1.6.1.1.2 | Adopter review |  | 5d | 2007-03-08 | 2007-03-14 | 149 | 122d | 0d | Adopters | 40h |
| 151 | 1.6.1.1.3 | Developer update |  | 5d | 2007-03-15 | 2007-03-21 | 150 | 122d | 0d | Developers | 40h |
| 152 | 1.6.1.1.4 | Adopter review and sign |  | 5d | 2007-03-22 | 2007-03-28 | 151 | 122d | 0d | Adopters | 40h |
| 153 | 1.6.1.1.5 | Deliver signed test plan to BAH (task 3.6.1, task 5.4.1) | milestone | 0d | 2007-03-28 | 2007-03-28 | 152 | 122d | 0d | Patrick |  |
| 154 | 1.6.1.1.6 | BAH review signed test plan (task 3.6.1, task 5.4.1) |  | 10d | 2007-03-29 | 2007-04-11 | 153 | 122d |  | BAH | 80h |

| ID | WBS | Task | Type | Duration | Start | Finish | Predecessors | Total slack | Free slack | Resources | Work |
| --- | --- | --- | --- | --- | --- | --- | --- | --- | --- | --- | --- |
| 155 | 1.6.1.2 | **Integration and system testing (task 3.8.1)** |  | 10d | 2007-04-16 | 2007-04-27 | 149, 144FS-5d | 110d |  | Developers; BAH | 288h |
| 156 | 1.6.1.2.1 | Generate test data |  | 1d | 2007-04-16 | 2007-04-16 |  | 119d |  | Developers | 8h |
| 157 | 1.6.1.2.2 | Write tests |  | 3d | 2007-04-16 | 2007-04-18 |  | 115d | 0d | Developers | 24h |
| 158 | 1.6.1.2.3 | Validate tests |  | 1d | 2007-04-19 | 2007-04-19 | 157 | 115d | 0d | Developers | 8h |
| 159 | 1.6.1.2.4 | Generate test report |  | 1d | 2007-04-20 | 2007-04-20 | 158 | 115d |  | Developers | 8h |
| 160 | 1.6.1.2.5 | Deliver test report to BAH (task 3.8.1) | milestone | 0d | 2007-04-16 | 2007-04-16 |  | 120d |  | Patrick |  |
| 161 | 1.6.1.2.6 | BAH review test report (task 3.8.1) |  | 10d | 2007-04-16 | 2007-04-27 |  | 110d |  | BAH | 80h |
| 162 | 1.6.2 | **Adopter testing** |  | 30d | 2007-03-01 | 2007-04-11 |  | 122d |  | Adopters; Developers; BAH | 2264h |
| 163 | 1.6.2.1 | **Update adopter test plan (task 5.5.1)** |  | 30d | 2007-03-01 | 2007-04-11 |  | 122d |  | Adopters; Developers; BAH | 1000h |
| 164 | 1.6.2.1.1 | Adopter update test script |  | 5d | 2007-03-01 | 2007-03-07 |  | 122d | 0d | Adopters | 40h |
| 165 | 1.6.2.1.2 | Adopter update test approach |  | 5d | 2007-03-08 | 2007-03-14 | 164 | 122d | 0d | Adopters | 40h |
| 166 | 1.6.2.1.3 | Developer review |  | 5d | 2007-03-15 | 2007-03-21 | 165 | 122d | 0d | Patrick; Ram | 80h |
| 167 | 1.6.2.1.4 | Adopter update |  | 5d | 2007-03-22 | 2007-03-28 | 166 | 122d | 0d | Adopters | 40h |
| 168 | 1.6.2.1.5 | Developer deliver adopter test plan to BAH (task 5.5.1) | milestone | 0d | 2007-03-28 | 2007-03-28 | 167 | 122d | 0d | Patrick |  |
| 169 | 1.6.2.1.6 | BAH review adopter test plan (task 5.5.1) |  | 10d | 2007-03-29 | 2007-04-11 | 168 | 122d |  | BAH | 80h |
| 170 | 1.6.2.2 | **QA testing (task 5.6.1)** |  | 22d | 2007-03-08 | 2007-04-06 | 164 | 125d |  | Adopters; BAH | 544h |
| 171 | 1.6.2.2.1 | Adopter create test data |  | 5d | 2007-03-08 | 2007-03-14 |  | 125d | 0d | Adopters | 40h |
| 172 | 1.6.2.2.2 | Adopter perform test script |  | 5d | 2007-03-15 | 2007-03-21 | 171 | 125d | 0d | Adopters | 40h |
| 173 | 1.6.2.2.3 | Adopter document results |  | 2d | 2007-03-22 | 2007-03-23 | 172 | 125d | 0d | Adopters | 16h |
| 174 | 1.6.2.2.4 | Adopter log bugs |  | 2d | 2007-03-26 | 2007-03-27 | 173 | 133d |  | Adopters | 16h |
| 175 | 1.6.2.2.5 | Developer deliver adopter test report to BAH (task 5.6.1) | milestone | 0d | 2007-03-23 | 2007-03-23 | 173 | 125d | 0d | Patrick |  |
| 176 | 1.6.2.2.6 | BAH review adopter test report (task 5.6.1) |  | 10d | 2007-03-26 | 2007-04-06 | 175 | 125d |  | BAH | 80h |
| 177 | 1.7 | **Documentation** |  | 15d | 2007-04-16 | 2007-05-04 | 2 | 105d |  | Developers; Adopters; BAH | 1656h |
| 178 | 1.7.1 | **Installation guide (task 3.10.1)** |  | 13d | 2007-04-18 | 2007-05-04 | 144FS-3d | 105d |  | Developers; BAH | 312h |
| 179 | 1.7.1.1 | Update installation guide |  | 3d | 2007-04-18 | 2007-04-20 |  | 105d | 0d | Developers | 24h |
| 180 | 1.7.1.2 | Deliver installation guide to BAH (task 3.10.1) | milestone | 0d | 2007-04-20 | 2007-04-20 | 179 | 105d | 0d | Patrick |  |
| 181 | 1.7.1.3 | BAH review of installation guide (task 3.10.1) |  | 10d | 2007-04-23 | 2007-05-04 | 180 | 105d |  | BAH | 80h |

| ID | WBS | Task | Type | Duration | Start | Finish | Predecessors | Total slack | Free slack | Constraint | Resources | Work |
| --- | --- | --- | --- | --- | --- | --- | --- | --- | --- | --- | --- | --- |
| 182 | 1.7.2 | **Administration guide (task 3.13.1)** |  | 13d | 2007-04-18 | 2007-05-04 | 144FS-3d | 105d |  |  | Developers; BAH | 312h |
| 183 | 1.7.2.1 | Update administration guide |  | 3d | 2007-04-18 | 2007-04-20 |  | 105d | 0d |  | Developers | 24h |
| 184 | 1.7.2.2 | Deliver administration guide to BAH (task 3.13.1) | milestone | 0d | 2007-04-20 | 2007-04-20 | 183 | 105d | 0d |  | Patrick |  |
| 185 | 1.7.2.3 | BAH review of administration guide (task 3.13.1) |  | 10d | 2007-04-23 | 2007-05-04 | 184 | 105d |  |  | BAH | 80h |
| 186 | 1.7.3 | **Release notes (task 3.14.1)** |  | 13d | 2007-04-18 | 2007-05-04 | 144FS-3d | 105d |  |  | Developers; BAH | 312h |
| 187 | 1.7.3.1 | Update release notes |  | 3d | 2007-04-18 | 2007-04-20 |  | 105d | 0d |  | Developers | 24h |
| 188 | 1.7.3.2 | Deliver release notes to BAH (task 3.14.1) | milestone | 0d | 2007-04-20 | 2007-04-20 | 187 | 105d | 0d |  | Patrick |  |
| 189 | 1.7.3.3 | BAH review of release notes (task 3.14.1) |  | 10d | 2007-04-23 | 2007-05-04 | 188 | 105d |  |  | BAH | 80h |
| 190 | 1.7.4 | **Adopter summary of C3PR (task 5.1.1)** |  | 15d | 2007-04-16 | 2007-05-04 | 144FS-5d | 105d |  |  | Adopters; BAH | 360h |
| 191 | 1.7.4.1 | Adopter update summary |  | 3d | 2007-04-16 | 2007-04-18 |  | 105d | 0d |  | Adopters | 24h |
| 192 | 1.7.4.2 | Developer review summary |  | 1d | 2007-04-19 | 2007-04-19 | 191 | 105d | 0d |  | Adopters | 8h |
| 193 | 1.7.4.3 | Adopter update summary |  | 1d | 2007-04-20 | 2007-04-20 | 192 | 105d | 0d |  | Adopters | 8h |
| 194 | 1.7.4.4 | Developer deliver C3PR summary to BAH (task 5.1.1) | milestone | 0d | 2007-04-20 | 2007-04-20 | 193 | 105d | 0d |  | Patrick |  |
| 195 | 1.7.4.5 | BAH review of C3PR summary (task 5.1.1) |  | 10d | 2007-04-23 | 2007-05-04 | 194 | 105d |  |  | BAH | 80h |
| 196 | 2 | **Iteration 2 (eligibility, study personnel, security, multi-site study)** |  | 20d | 2007-04-02 | 2007-04-27 |  | 105d |  |  |  |  |
| 197 | 2.1 | Iteration start | milestone | 0d | 2007-04-02 | 2007-04-02 |  | 105d | 0d | start no earlier than 2007-04-02 |  |  |
| 198 | 2.2 | **Implementation (task 3.5.1)** |  | 20d | 2007-04-02 | 2007-04-27 | 197 | 105d |  |  |  |  |
| 199 | 2.2.1 | Implement import eligibility criteria from file |  | 5d | 2007-04-02 | 2007-04-06 | 106 | 105d | 0d |  |  |  |
| 200 | 2.2.2 | **caDSR integration** |  | 10d | 2007-04-09 | 2007-04-20 | 199 | 105d | 0d |  |  |  |
| 201 | 2.2.2.1 | Review C3PR Release 1 code |  | 5d | 2007-04-09 | 2007-04-13 |  | 105d | 0d |  |  |  |
| 202 | 2.2.2.2 | Implement import eligibility criteria from caDSR |  | 5d | 2007-04-16 | 2007-04-20 | 201 | 105d |  |  |  |  |
| 203 | 2.2.3 | Security |  | 20d | 2007-04-02 | 2007-04-27 |  | 110d |  |  |  |  |
| 204 | 3 | **Iteration 3 (stratification, security, multi-site study)** |  | 0d | 2007-05-02 | 2007-05-02 |  | 108d |  |  |  |  |
| 205 | 3.1 | Iteration start | milestone | 0d | 2007-05-02 | 2007-05-02 |  | 108d |  | start no earlier than 2007-05-02 |  |  |

| ID | WBS | Task | Type | Duration | Start | Finish | Total slack | Constraint |
| --- | --- | --- | --- | --- | --- | --- | --- | --- |
| 206 | 4 | **Iteration 4 (stratification, randomization, reporting, legacy systems)** |  | 0d | 2007-06-01 | 2007-06-01 | 86d |  |
| 207 | 4.1 | Iteration start | milestone | 0d | 2007-06-01 | 2007-06-01 | 86d | start no earlier than 2007-06-01 |
| 208 | 5 | **Iteration 5 (randomization, reporting, legacy systems)** |  | 0d | 2007-07-02 | 2007-07-02 | 65d |  |
| 209 | 5.1 | Iteration start | milestone | 0d | 2007-07-02 | 2007-07-02 | 65d | start no earlier than 2007-07-02 |
| 210 | 6 | **Iteration 6 (randomization, installer)** |  | 0d | 2007-08-01 | 2007-08-01 | 43d |  |
| 211 | 6.1 | Iteration start | milestone | 0d | 2007-08-01 | 2007-08-01 | 43d | start no earlier than 2007-08-01 |
| 212 | 7 | **Iteration 7** |  | 0d | 2007-09-03 | 2007-09-03 | 20d |  |
| 213 | 7.1 | Iteration start | milestone | 0d | 2007-09-03 | 2007-09-03 | 20d | start no earlier than 2007-09-03 |
| 214 | 8 | **Iteration 8** |  | 0d | 2007-10-01 | 2007-10-01 | 0d |  |
| 215 | 8.1 | Iteration start | milestone | 0d | 2007-10-01 | 2007-10-01 | 0d | start no earlier than 2007-10-01 |
